# T.O.P_Ms_Project_v0.0.6

Schedule from MS Project, 2026-03-05 to 2026-06-14, A marks actual dates.

## Calendars

- Standard: Mon-Sun 08:00-12:00, 13:00-17:00.

## Resources

| Resource |
| --- |
| 김민지 |
| 김태경 |
| 김혜현 |
| 서현준 |
| 지승현 |
| PM김민지 |
| ENG1김태경 |
| ENG2김혜현 |
| QA서현준 |
| CM지승현 |
| $ |
| QA 서현준 |

## Schedule

| ID | WBS | Task | Type | Duration | Start | Finish | Predecessors | Complete | Actual finish | Constraint | Resources | Work | Actual work |
| --- | --- | --- | --- | --- | --- | --- | --- | --- | --- | --- | --- | --- | --- |
| 1 | 1 | **T.O.P[SEED]** |  | 102d? | 2026-03-05 A | 2026-06-14 A |  | 100% |  |  |  | 1451.5h | 1451.5h |
| 2 | 1.1 | **제안** |  | 63d? | 2026-03-05 A | 2026-05-06 A |  | 100% |  |  |  | 973.5h | 973.5h |
| 3 | 1.1.1 | **팀 편성** |  | 7d? | 2026-03-05 A | 2026-03-11 |  | 100% | 2026-03-05 |  |  | 252h | 252h |
| 4 | 1.1.1.1 | 팀 구성 | milestone | 0d? | 2026-03-05 A | 2026-03-05 A |  | 100% |  | finish no earlier than 2026-03-05 | PM김민지 [90%]; ENG1김태경 [90%]; ENG2김혜현 [90%]; QA서현준 [90%]; CM지승현 [90%] |  |  |
| 5 | 1.1.1.2 | 역할 분담 |  | 5d? | 2026-03-05 A | 2026-03-11 A | 4 | 100% |  |  | CM지승현 [90%]; ENG1김태경 [90%]; ENG2김혜현 [90%]; PM김민지 [90%]; QA서현준 [90%] | 252h | 252h |
| 6 | 1.1.2 | 주제 선정 |  | 7.12d? | 2026-03-05 A | 2026-03-12 A |  | 100% |  | start no earlier than 2026-03-05 | CM지승현 [90%]; ENG1김태경 [90%]; ENG2김혜현 [90%]; PM김민지 [90%]; QA서현준 [90%] | 256.5h | 256.5h |
| 7 | 1.1.3 | **로고 제작 및 선정** |  | 0.75d? | 2026-03-12 A | 2026-03-12 A |  | 100% |  |  |  | 6h | 6h |
| 8 | 1.1.3.1 | 로고 제작 | milestone | 0d? | 2026-03-12 A | 2026-03-12 A | 6 | 100% |  | start no earlier than 2026-03-12 | CM지승현 [90%]; ENG1김태경 [90%]; ENG2김혜현 [90%]; PM김민지 [90%]; QA서현준 [90%] |  |  |
| 9 | 1.1.3.2 | 로고 선정 |  | 0.75d? | 2026-03-12 A | 2026-03-12 A | 8 | 100% |  |  | PM김민지 | 6h | 6h |
| 10 | 1.1.4 | 산출물 관리 계획 수립 |  | 2d? | 2026-03-13 A | 2026-03-14 A | 9 | 100% |  |  | CM지승현 | 16h | 16h |
| 11 | 1.1.5 | 프로젝트 제안 |  | 1d? | 2026-03-17 A | 2026-03-17 A | 10 | 100% |  |  | PM김민지 | 8h | 8h |
| 12 | 1.1.6 | **분석** |  | 10d? | 2026-03-18 A | 2026-03-27 A |  | 100% |  |  |  | 67h | 67h |
| 13 | 1.1.6.1 | 형상 관리 계획 수립 |  | 1.38d? | 2026-03-18 A | 2026-03-19 A | 11 | 100% |  | finish no earlier than 2026-03-19 | CM지승현 | 11h | 11h |
| 14 | 1.1.6.2 | 위험 관리 계획 수립 |  | 0.62d? | 2026-03-19 A | 2026-03-19 A | 13 | 100% |  |  | ENG1김태경; ENG2김혜현 | 10h | 10h |
| 15 | 1.1.6.3 | 품질 관리 계획 수립 |  | 1d? | 2026-03-20 A | 2026-03-20 A | 14 | 100% |  |  | QA서현준 | 8h | 8h |
| 16 | 1.1.6.4 | 초기 개발 기획 |  | 2.25d? | 2026-03-24 A | 2026-03-26 A | 15 | 100% |  |  | PM김민지 | 18h | 18h |
| 17 | 1.1.6.5 | 요구사항 분석 |  | 1d? | 2026-03-26 A | 2026-03-26 A | 16 | 100% |  |  | ENG1김태경; ENG2김혜현 | 12h | 12h |
| 18 | 1.1.6.6 | 요구사항 검토 및 승인 |  | 1d? | 2026-03-27 A | 2026-03-27 A | 17 | 100% |  |  | QA서현준 | 8h | 8h |
| 19 | 1.1.7 | **설계** |  | 35d? | 2026-04-02 A | 2026-05-06 A |  | 100% |  |  |  | 368h | 368h |
| 20 | 1.1.7.1 | **기본 설계 작성** |  | 5d? | 2026-04-02 A | 2026-04-06 A |  | 100% |  |  |  | 80h | 80h |
| 21 | 1.1.7.1.1 | 시스템 아키텍처 정의 |  | 2d? | 2026-04-02 A | 2026-04-03 A | 17 | 100% |  | start no earlier than 2026-04-02 | ENG1김태경; ENG2김혜현 | 32h | 32h |
| 22 | 1.1.7.1.2 | 파이프라인 설계 |  | 2d? | 2026-04-04 A | 2026-04-05 A | 21 | 100% |  |  | ENG1김태경; ENG2김혜현 | 32h | 32h |
| 23 | 1.1.7.1.3 | UI/UX 설계 |  | 1d? | 2026-04-06 A | 2026-04-06 A | 22 | 100% |  |  | ENG1김태경; ENG2김혜현 | 16h | 16h |
| 24 | 1.1.7.2 | 중간 PPT 제작 |  | 13d? | 2026-04-07 A | 2026-04-19 A | 23 | 100% |  |  | ENG2김혜현 | 104h | 104h |

| ID | WBS | Task | Type | Duration | Start | Finish | Predecessors | Complete | Actual finish | Constraint | Resources | Work | Actual work |
| --- | --- | --- | --- | --- | --- | --- | --- | --- | --- | --- | --- | --- | --- |
| 25 | 1.1.7.3 | **상세 설계 작성** |  | 11.5d? | 2026-04-24 A | 2026-05-05 |  | 100% | 2026-05-06 |  |  | 184h | 184h |
| 26 | 1.1.7.3.1 | 데이터 전처리 알고리즘 설계 |  | 1d? | 2026-04-24 A | 2026-04-24 A | 24 | 100% |  | start no earlier than 2026-04-24 | ENG1김태경; ENG2김혜현 | 16h | 16h |
| 27 | 1.1.7.3.2 | 모델 구조 설계 |  | 2d? | 2026-04-25 A | 2026-04-26 A | 26 | 100% |  |  | ENG1김태경; ENG2김혜현 | 32h | 32h |
| 28 | 1.1.7.3.3 | 인터페이스 상세 설계 |  | 8.5d? | 2026-04-27 A | 2026-05-05 A | 27 | 100% |  |  | ENG1김태경; ENG2김혜현 | 136h | 136h |
| 29 | 1.2 | **구현** |  | 28d? | 2026-05-05 A | 2026-06-02 A |  | 100% |  |  |  | 350h | 350h |
| 30 | 1.2.1 | 소스코드 문서 관리 수립 | milestone | 0d? | 2026-05-05 A | 2026-05-05 A | 28 | 100% |  |  | CM지승현 |  |  |
| 31 | 1.2.2 | **데이터 전처리** |  | 1.5d? | 2026-05-06 A | 2026-05-07 A |  | 100% |  |  |  | 54h | 54h |
| 32 | 1.2.2.1 | VISEM 데이터 전처리 |  | 0.5d? | 2026-05-06 A | 2026-05-06 A | 30 | 100% |  |  | PM김민지 [90%]; ENG1김태경 [90%]; ENG2김혜현 [90%]; QA서현준 [90%]; CM지승현 [90%] | 18h | 18h |
| 33 | 1.2.2.2 | VISEM-Tracking 데이터 전처리 |  | 0.5d? | 2026-05-06 A | 2026-05-06 A | 32 | 100% |  |  | PM김민지 [90%]; ENG1김태경 [90%]; ENG2김혜현 [90%]; QA서현준 [90%]; CM지승현 [90%] | 18h | 18h |
| 34 | 1.2.2.3 | 정자 형태 데이터 전처리 |  | 0.5d? | 2026-05-07 A | 2026-05-07 A | 33 | 100% |  |  | PM김민지 [90%]; ENG1김태경 [90%]; ENG2김혜현 [90%]; QA서현준 [90%]; CM지승현 [90%] | 18h | 18h |
| 35 | 1.2.3 | **모듈 별 모델 개발** |  | 15.5d? | 2026-05-07 A | 2026-05-22 |  | 100% | 2026-05-17 |  |  | 184h | 184h |
| 36 | 1.2.3.1 | 운동성 추적/분석 AI 모듈 |  | 8d? | 2026-05-07 A | 2026-05-14 A | 33 | 100% |  |  | PM김민지 | 64h | 64h |
| 37 | 1.2.3.2 | 정자 탐지·형태·운동성 분석 통합 AI 모듈 |  | 8d? | 2026-05-07 A | 2026-05-15 A | 34 | 100% |  |  | ENG1김태경 | 64h | 64h |
| 38 | 1.2.3.3 | 정자 검출 및 개수 추정 AI 모듈 |  | 7d? | 2026-05-15 A | 2026-05-22 A | 32, 33, 34 | 100% |  |  | QA서현준 | 56h | 56h |
| 39 | 1.2.4 | **웹 개발** |  | 7d? | 2026-05-27 A | 2026-06-02 A |  | 100% |  |  |  | 112h | 112h |
| 40 | 1.2.4.1 | UI/UX 개발 |  | 6d? | 2026-05-27 A | 2026-06-01 A | 38 | 100% |  |  | ENG1김태경; ENG2김혜현 | 96h | 96h |
| 41 | 1.2.4.2 | 모델 통합 |  | 1d? | 2026-06-02 A | 2026-06-02 A | 40 | 100% |  |  | ENG1김태경; ENG2김혜현 | 16h | 16h |
| 42 | 1.3 | **시험** |  | 5d? | 2026-06-05 A | 2026-06-09 |  | 100% | 2026-06-08 |  |  | 32h | 32h |
| 43 | 1.3.1 | **단위 시험** |  | 4d? | 2026-06-05 A | 2026-06-08 A |  | 100% |  |  |  | 16h | 16h |
| 44 | 1.3.1.1 | 계획 수립 |  | 1d? | 2026-06-05 A | 2026-06-05 A | 41 | 100% |  |  | QA서현준 | 8h | 8h |
| 45 | 1.3.1.2 | 시험 수행 및 결과 기록 |  | 1d? | 2026-06-08 A | 2026-06-08 A | 44 | 100% |  |  | QA서현준 | 8h | 8h |
| 46 | 1.3.2 | **통합 시험** |  | 5d? | 2026-06-05 A | 2026-06-09 |  | 100% | 2026-06-08 |  |  | 16h | 16h |
| 47 | 1.3.2.1 | 계획 수립 |  | 1d? | 2026-06-05 A | 2026-06-05 A | 41 | 100% |  |  | QA서현준 | 8h | 8h |
| 48 | 1.3.2.2 | 시험 수행 및 결과 기록 |  | 1d? | 2026-06-09 A | 2026-06-09 A | 47 | 100% |  |  | QA서현준 | 8h | 8h |

| ID | WBS | Task | Duration | Start | Finish | Predecessors | Complete | Resources | Work | Actual work |
| --- | --- | --- | --- | --- | --- | --- | --- | --- | --- | --- |
| 49 | 1.4 | **완료** | 6d? | 2026-06-09 A | 2026-06-14 A |  | 100% |  | 96h | 96h |
| 50 | 1.4.1 | 사용자 매뉴얼 작성 | 1d? | 2026-06-09 A | 2026-06-09 A | 48 | 100% | ENG1김태경; ENG2김혜현 | 16h | 16h |
| 51 | 1.4.2 | 개발 완료 보고 | 1d? | 2026-06-09 A | 2026-06-09 A | 48 | 100% | PM김민지 | 8h | 8h |
| 52 | 1.4.3 | 산출물 통합본 | 3d? | 2026-06-09 A | 2026-06-11 A | 51 | 100% | CM지승현 | 24h | 24h |
| 53 | 1.4.4 | 최종 발표 PPT 제작 | 6d? | 2026-06-09 A | 2026-06-14 A | 48 | 100% | ENG1김태경 | 48h | 48h |
